# Date_Helper

Schedule from ProjectLibre, 2026-03-24 to 2026-03-27.

## Calendars

- Пятидневка: Mon-Fri 08:00-12:00, 13:00-17:00; Sat-Sun off.

## Resources

| Resource |
| --- |
| Не назначено |

## Schedule

| ID | WBS | Task | Duration | Start | Finish | Predecessors | Constraint |
| --- | --- | --- | --- | --- | --- | --- | --- |
| 1 | 1 | **Аналитика** | 2.29d | 2026-03-24 11:00 | 2026-03-26 14:20 |  | as late as possible |
| 2 | 1.1 | Формирование первичной темы ВКР | 0.21d | 2026-03-24 11:00 | 2026-03-24 13:40 |  | as late as possible |
| 3 | 1.2 | Проверка реализуемости темы (поиск решений и ограничений по открытым источникам) | 0.62d | 2026-03-24 13:40 | 2026-03-25 09:40 | 2 | start no earlier than 2026-03-20 11:00 |
| 4 | 1.3 | Уточнение и корректировка темы совместно с научным руководителем | 0.21d | 2026-03-25 09:40 | 2026-03-25 11:20 | 3 | as late as possible |
| 5 | 1.4 | Повторная проверка реализуемости уточнённой темы (сравнение подходов/рисков) | 0.62d | 2026-03-25 11:20 | 2026-03-26 08:20 | 4 | as late as possible |
| 6 | 1.5 | Формирование и фиксация основной концепции решения | 0.21d | 2026-03-26 08:20 | 2026-03-26 10:00 | 5 | as late as possible |
| 7 | 1.6 | Анализ аналогов (функции, ограничения, применимость к задаче) | 0.21d | 2026-03-26 10:00 | 2026-03-26 11:40 | 6 | as late as possible |
| 8 | 1.7 | Анализ методов решения (OCR, CV-подходы, детекция) | 0.21d | 2026-03-26 11:40 | 2026-03-26 14:20 | 7 | as late as possible |
| 9 | 2 | **Данные** | 0.04d | 2026-03-26 14:20 | 2026-03-26 14:40 | 1 | as late as possible |
| 10 | 2.1 | Подготовка первичного набора данных для тестирования | 0.04d | 2026-03-26 14:20 | 2026-03-26 14:40 |  | as late as possible |
| 11 | 3 | **R&D** | 1.25d | 2026-03-26 14:40 | 2026-03-27 16:40 | 9 | as late as possible |
| 12 | 3.1 | Реализация прототипа метода №1 (OCR) | 0.25d | 2026-03-26 14:40 | 2026-03-26 16:40 |  | as late as possible |
| 13 | 3.2 | Запуск и первичная интеграция метода №1 | 0.12d | 2026-03-26 16:40 | 2026-03-27 08:40 | 12 | as late as possible |
| 14 | 3.3 | Тестирование и оценка метода №1 на тестовых данных | 0.12d | 2026-03-27 08:40 | 2026-03-27 09:40 | 13 | as late as possible |
| 15 | 3.4 | Реализация прототипа метода №2 (аналитический поиск области даты) | 0.12d | 2026-03-27 09:40 | 2026-03-27 10:40 | 14 | as late as possible |
| 16 | 3.5 | Запуск и первичная интеграция метода №2 | 0.12d | 2026-03-27 10:40 | 2026-03-27 11:40 | 15 | as late as possible |
| 17 | 3.6 | Тестирование и сравнительная оценка метода №2 | 0.29d | 2026-03-27 11:40 | 2026-03-27 15:00 | 16 | as late as possible |
| 18 | 3.7 | Проработка и выбор метода №3 (детекция YOLO) | 0.21d | 2026-03-27 15:00 | 2026-03-27 16:40 | 17 | as late as possible |
| 19 | 4 | **ML** | 0.04d | 2026-03-27 16:40 | 2026-03-27 17:00 | 11 | as late as possible |
| 20 | 4.1 | Реализация базовой интеграции YOLO (подготовка окружения/запуск) | 0.04d | 2026-03-27 16:40 | 2026-03-27 17:00 |  | as late as possible |
